# Proyecto software TechStore - ProjectLibre

Schedule from MS Project XML, 2026-05-11 to 2026-08-10.
TechStore

## Resources

| Resource | Group | Rate | Cost per use | Notes |
| --- | --- | --- | --- | --- |
| Gerente de proyecto | Mano de obra | 850 |  | Project Manager. Control de alcance, cronograma, presupuesto, riesgos y comunicacion con direccion. |
| Product Owner | Mano de obra | 720 |  | Product Owner. Prioriza backlog, valida valor de negocio y acepta entregables. |
| Scrum Master | Mano de obra | 650 |  | Scrum Master. Facilita ceremonias, remueve bloqueos y cuida el flujo del equipo. |
| Analista de negocio | Mano de obra | 620 |  | Business Analyst. Levantamiento, reglas de negocio, historias de usuario y criterios de aceptacion. |
| Disenador UX/UI | Mano de obra | 580 |  | UX/UI Designer. Arquitectura de informacion, prototipos, sistema visual y pruebas de usabilidad. |
| Desarrollador frontend | Mano de obra | 650 |  | Frontend Engineer. Interfaz web, accesibilidad, responsive, integracion con API y estados de UI. |
| Desarrollador backend | Mano de obra | 700 |  | Backend Engineer. API, base de datos, autenticacion, logica de negocio e integraciones. |
| Ingeniero QA | Mano de obra | 480 |  | QA Engineer. Plan de pruebas, ejecucion funcional, regresion, evidencias y defectos. |
| DevOps / Cloud | Mano de obra | 760 |  | DevOps Engineer. CI/CD, ambientes, monitoreo, backups y despliegue. |
| Especialista seguridad | Mano de obra | 820 |  | Security Engineer. Modelo de amenazas, revision OWASP, hardening y validacion de controles. |
| Servidor cloud staging/prod | Arrendamiento |  | 42 | Infraestructura cloud. Arrendamiento por 3 meses: VPS administrado, base de datos, backups y monitoreo. |
| Licencias colaboracion y diseno | Arrendamiento |  | 37.5 | SaaS de equipo. Figma, Jira/Confluence, repositorio privado y almacenamiento de evidencias por 3 meses. |
| Equipo de pruebas y perifericos | Material |  | 260 | Material QA. Dispositivos de prueba, cables, adaptadores, disco externo y perifericos. |

## Schedule

| ID | WBS | Task | Type | Duration | Start | Finish | Predecessors | Resources | Work |
| --- | --- | --- | --- | --- | --- | --- | --- | --- | --- |
| 1 | P1 | **Inicio y descubrimiento** |  | 27d | 2026-05-11 | 2026-05-27 |  |  |  |
| 2 | P1.1 | Acta de constitucion y alcance inicial |  | 2d | 2026-05-11 | 2026-05-12 |  | Gerente de proyecto; Product Owner | 20h |
| 3 | P1.2 | Identificacion de interesados y matriz RACI |  | 2d | 2026-05-13 | 2026-05-14 | 2 | Gerente de proyecto; Analista de negocio | 16h |
| 4 | P1.3 | Plan de comunicacion y gobierno del proyecto |  | 2d | 2026-05-13 | 2026-05-14 | 2 | Gerente de proyecto; Scrum Master | 16h |
| 5 | P1.4 | Analisis de contexto del negocio TechStore |  | 2d | 2026-05-15 | 2026-05-18 | 3, 4 | Analista de negocio; Product Owner | 16h |
| 6 | P1.5 | Levantamiento de necesidades con usuarios clave |  | 5d | 2026-05-15 | 2026-05-21 | 3, 4 | Analista de negocio; Product Owner; Disenador UX/UI | 50h |
| 7 | P1.6 | Inventario de procesos actuales y sistemas relacionados |  | 3d | 2026-05-18 | 2026-05-20 | 5 | Analista de negocio; Desarrollador backend; DevOps / Cloud | 24h |
| 8 | P1.7 | Analisis inicial de riesgos del proyecto |  | 2d | 2026-05-20 | 2026-05-21 | 5 | Gerente de proyecto; Scrum Master; Especialista seguridad | 14h |
| 9 | P1.8 | Definicion de alcance MVP y fuera de alcance |  | 2d | 2026-05-22 | 2026-05-25 | 6, 7 | Gerente de proyecto; Product Owner; Analista de negocio | 24h |
| 10 | P1.9 | Backlog inicial priorizado |  | 3d | 2026-05-22 | 2026-05-26 | 6 | Product Owner; Analista de negocio; Gerente de proyecto | 36h |
| 11 | P1.10 | Estimacion inicial de esfuerzo y presupuesto |  | 2d | 2026-05-25 | 2026-05-26 | 9, 10 | Gerente de proyecto; Scrum Master; Desarrollador backend; Desarrollador frontend | 20h |
| 12 | P1.11 | Plan de gestion de calidad |  | 1d | 2026-05-26 | 2026-05-26 | 11 | Gerente de proyecto; Ingeniero QA; Scrum Master | 10h |
| 13 | P1.12 | Kickoff formal con equipo y sponsor | milestone | 1d | 2026-05-27 | 2026-05-27 | 12 | Gerente de proyecto; Product Owner; Scrum Master | 8h |
| 14 | P2 | **Analisis y diseno funcional** |  | 40d | 2026-05-28 | 2026-06-18 |  |  |  |
| 15 | P2.13 | Historias de usuario y criterios de aceptacion |  | 5d | 2026-05-28 | 2026-06-03 | 13 | Analista de negocio; Product Owner; Ingeniero QA | 56h |
| 16 | P2.14 | Modelo de dominio y reglas de negocio |  | 4d | 2026-06-04 | 2026-06-09 | 15 | Analista de negocio; Desarrollador backend; Product Owner | 44h |
| 17 | P2.15 | Taller de requisitos no funcionales |  | 2d | 2026-06-04 | 2026-06-05 | 15 | Analista de negocio; Desarrollador backend; DevOps / Cloud; Especialista seguridad | 22h |
| 18 | P2.16 | Mapa de navegacion y arquitectura de informacion |  | 3d | 2026-05-28 | 2026-06-01 | 13 | Disenador UX/UI; Analista de negocio | 28h |
| 19 | P2.17 | Wireframes de flujo de autenticacion y usuarios |  | 3d | 2026-06-02 | 2026-06-04 | 18 | Disenador UX/UI; Desarrollador frontend; Product Owner | 26h |
| 20 | P2.18 | Wireframes de catalogo y administracion |  | 3d | 2026-06-03 | 2026-06-05 | 18 | Disenador UX/UI; Analista de negocio; Desarrollador frontend | 26h |
| 21 | P2.19 | Wireframes de flujo transaccional principal |  | 3d | 2026-06-04 | 2026-06-08 | 18 | Disenador UX/UI; Product Owner; Analista de negocio | 28h |
| 22 | P2.20 | Prototipo visual navegable |  | 5d | 2026-06-09 | 2026-06-15 | 19, 20, 21 | Disenador UX/UI; Desarrollador frontend; Product Owner | 50h |
| 23 | P2.21 | Mini sistema de diseno y componentes base |  | 4d | 2026-06-09 | 2026-06-12 | 22 | Disenador UX/UI; Desarrollador frontend | 32h |
| 24 | P2.22 | Plan de pruebas funcionales y trazabilidad |  | 3d | 2026-06-04 | 2026-06-08 | 15 | Ingeniero QA; Analista de negocio | 28h |
| 25 | P2.23 | Validacion de prototipo con usuarios clave |  | 2d | 2026-06-16 | 2026-06-17 | 22 | Disenador UX/UI; Product Owner; Analista de negocio | 22h |
| 26 | P2.24 | Refinamiento de backlog para desarrollo |  | 2d | 2026-06-16 | 2026-06-17 | 16, 24, 25 | Product Owner; Analista de negocio; Scrum Master | 20h |
| 27 | P2.25 | Aprobacion funcional de analisis y diseno | milestone | 1d | 2026-06-18 | 2026-06-18 | 26 | Gerente de proyecto; Product Owner; Analista de negocio | 8h |

Notes:
- 2: Project charter firmado con objetivos SMART, restricciones, supuestos y patrocinador definido.
- 3: Mapa de stakeholders, canales, responsables, aprobadores y nivel de influencia.
- 4: Cadencia de reuniones, minutas, tablero de decisiones y reglas de escalamiento.
- 5: Situacion actual, objetivos de venta, necesidades operativas y restricciones del negocio.
- 6: Entrevistas, pain points, oportunidades, restricciones operativas y flujo actual documentado.
- 7: Mapa de procesos, sistemas conectados, entradas, salidas y responsables actuales.
- 8: Registro inicial de riesgos, probabilidad, impacto, respuesta y propietario.
- 9: Alcance aprobado, exclusiones, restricciones y criterios de exito medibles.
- 10: Epicas, historias candidatas, criterios de prioridad y primera version del MVP.
- 11: Estimacion por frente, supuestos, costos principales y reservas de gestion.
- 12: Criterios de calidad, revisiones, evidencia requerida y politicas de aceptacion.
- 13: Presentacion de alcance, calendario, riesgos iniciales y acuerdos de trabajo.
- 15: Historias INVEST con criterios Given/When/Then y reglas de negocio verificables.
- 16: Entidades, relaciones, estados, validaciones y glosario funcional.
- 17: Requisitos de disponibilidad, rendimiento, seguridad, mantenibilidad y soporte priorizados.
- 18: Sitemap, flujos principales y jerarquia de pantallas para MVP.
- 19: Wireframes de login, recuperacion, perfil, roles y estados de error.
- 20: Wireframes de altas, edicion, busqueda, filtros, listados y detalle.
- 21: Wireframes del proceso principal con confirmaciones, estados y mensajes.
- 22: Prototipo mobile/desktop navegable con componentes y estados principales.
- 23: Tokens visuales, botones, formularios, tablas, alertas y componentes reutilizables.
- 24: Matriz historia-prueba, escenarios positivos/negativos y estrategia de regresion.
- 25: Hallazgos de usabilidad, ajustes priorizados y aprobacion del flujo visual principal.
- 26: Backlog listo para sprint, dependencias, criterios de listo y prioridades finales.
- 27: Acta de aprobacion funcional, diseno validado y autorizacion para construir.

| ID | WBS | Task | Type | Duration | Start | Finish | Predecessors | Resources | Work |
| --- | --- | --- | --- | --- | --- | --- | --- | --- | --- |
| 28 | P3 | **Arquitectura y preparacion tecnica** |  | 31d | 2026-06-10 | 2026-06-25 |  |  |  |
| 29 | P3.26 | Diseno de arquitectura tecnica |  | 4d | 2026-06-10 | 2026-06-15 | 16, 17 | Desarrollador backend; DevOps / Cloud; Especialista seguridad | 40h |
| 30 | P3.27 | Modelo de datos y migraciones iniciales |  | 4d | 2026-06-16 | 2026-06-19 | 29 | Desarrollador backend; Analista de negocio | 32h |
| 31 | P3.28 | Estrategia de API y contratos de integracion |  | 3d | 2026-06-16 | 2026-06-18 | 29 | Desarrollador backend; Desarrollador frontend; Ingeniero QA | 30h |
| 32 | P3.29 | Configuracion de repositorio y estrategia de ramas |  | 2d | 2026-06-10 | 2026-06-11 | 29 | DevOps / Cloud; Desarrollador frontend; Desarrollador backend | 16h |
| 33 | P3.30 | Configuracion de linters y calidad automatizada |  | 2d | 2026-06-12 | 2026-06-15 | 32 | DevOps / Cloud; Desarrollador frontend; Desarrollador backend | 18h |
| 34 | P3.31 | Pipeline CI para build y pruebas |  | 3d | 2026-06-15 | 2026-06-17 | 33 | DevOps / Cloud; Desarrollador backend; Desarrollador frontend | 28h |
| 35 | P3.32 | Ambientes dev y staging |  | 3d | 2026-06-18 | 2026-06-22 | 34 | DevOps / Cloud; Desarrollador backend; Servidor cloud staging/prod | 23h |
| 36 | P3.33 | Arquitectura de seguridad y permisos |  | 3d | 2026-06-16 | 2026-06-18 | 29 | Especialista seguridad; Desarrollador backend; Product Owner | 30h |
| 37 | P3.34 | Plan de respaldo y recuperacion tecnica |  | 2d | 2026-06-22 | 2026-06-23 | 35 | DevOps / Cloud; Desarrollador backend; Servidor cloud staging/prod | 15h |
| 38 | P3.35 | Preparacion de datos semilla y catalogos base |  | 2d | 2026-06-22 | 2026-06-23 | 30 | Desarrollador backend; Analista de negocio; Ingeniero QA | 18h |
| 39 | P3.36 | Revision tecnica de arquitectura y readiness | milestone | 1d | 2026-06-23 | 2026-06-23 | 30, 31, 34, 36, 38 | Gerente de proyecto; Desarrollador backend; DevOps / Cloud; Especialista seguridad | 12h |
| 40 | P3.37 | Plan de monitoreo y observabilidad |  | 2d | 2026-06-24 | 2026-06-25 | 35, 37 | DevOps / Cloud; Desarrollador backend; Especialista seguridad | 16h |
| 41 | P4 | **Construccion del producto** |  | 80d | 2026-06-16 | 2026-07-17 |  |  |  |
| 42 | P4.38 | Base del frontend y layout responsive |  | 5d | 2026-06-16 | 2026-06-22 | 23, 32 | Desarrollador frontend; Disenador UX/UI | 42h |
| 43 | P4.39 | Base del backend y estructura de servicios |  | 4d | 2026-06-22 | 2026-06-25 | 30, 39 | Desarrollador backend; DevOps / Cloud | 30h |
| 44 | P4.40 | API de autenticacion |  | 4d | 2026-06-22 | 2026-06-25 | 36, 43 | Desarrollador backend; Especialista seguridad; Ingeniero QA | 38h |
| 45 | P4.41 | Gestion de usuarios y perfiles |  | 4d | 2026-06-25 | 2026-06-30 | 44 | Desarrollador backend; Desarrollador frontend; Ingeniero QA | 38h |
| 46 | P4.42 | Gestion de roles y permisos en UI/API |  | 4d | 2026-06-30 | 2026-07-03 | 45, 36 | Desarrollador backend; Desarrollador frontend; Especialista seguridad; Ingeniero QA | 44h |
| 47 | P4.43 | Modulo de catalogo - backend |  | 5d | 2026-06-22 | 2026-06-26 | 30, 43 | Desarrollador backend; Ingeniero QA | 34h |
| 48 | P4.44 | Modulo de catalogo - frontend |  | 5d | 2026-06-25 | 2026-07-01 | 42, 47 | Desarrollador frontend; Disenador UX/UI; Ingeniero QA | 38h |
| 49 | P4.45 | Validaciones avanzadas de negocio |  | 3d | 2026-06-30 | 2026-07-02 | 47, 48 | Desarrollador backend; Analista de negocio; Ingeniero QA | 26h |
| 50 | P4.46 | Flujo transaccional - backend |  | 5d | 2026-07-01 | 2026-07-07 | 46, 49 | Desarrollador backend; Analista de negocio; Ingeniero QA | 46h |
| 51 | P4.47 | Flujo transaccional - frontend |  | 5d | 2026-07-02 | 2026-07-08 | 46, 48, 50 | Desarrollador frontend; Disenador UX/UI; Ingeniero QA | 44h |
| 52 | P4.48 | Bitacora y auditoria funcional |  | 3d | 2026-07-08 | 2026-07-10 | 50 | Desarrollador backend; Especialista seguridad; Ingeniero QA | 22h |
| 53 | P4.49 | Dashboard operativo y KPIs - backend |  | 3d | 2026-07-06 | 2026-07-08 | 47, 50 | Desarrollador backend; Product Owner | 20h |
| 54 | P4.50 | Dashboard operativo y KPIs - frontend |  | 4d | 2026-07-08 | 2026-07-13 | 53, 42 | Desarrollador frontend; Disenador UX/UI; Product Owner | 32h |
| 55 | P4.51 | Reportes exportables - backend |  | 3d | 2026-07-08 | 2026-07-10 | 53 | Desarrollador backend; Ingeniero QA | 20h |
| 56 | P4.52 | Reportes exportables - frontend |  | 3d | 2026-07-10 | 2026-07-14 | 55, 54 | Desarrollador frontend; Ingeniero QA | 22h |
| 57 | P4.53 | Busqueda avanzada y filtros combinados |  | 3d | 2026-07-10 | 2026-07-14 | 48, 55 | Desarrollador frontend; Desarrollador backend; Ingeniero QA | 30h |
| 58 | P4.54 | Notificaciones y correos transaccionales |  | 4d | 2026-07-13 | 2026-07-16 | 51, 52 | Desarrollador backend; Desarrollador frontend; DevOps / Cloud | 34h |
| 59 | P4.55 | Integracion con servicio externo simulado |  | 3d | 2026-07-13 | 2026-07-15 | 50, 31 | Desarrollador backend; DevOps / Cloud; Ingeniero QA | 24h |
| 60 | P4.56 | Integracion de analitica y logs estructurados |  | 4d | 2026-07-13 | 2026-07-16 | 51, 40 | DevOps / Cloud; Desarrollador backend; Especialista seguridad | 34h |
| 61 | P4.57 | Ajustes de accesibilidad y responsive final |  | 3d | 2026-07-15 | 2026-07-17 | 42, 51, 25 | Desarrollador frontend; Disenador UX/UI; Ingeniero QA | 28h |
| 62 | P4.58 | Revision de codigo y merge de release candidate |  | 2d | 2026-07-16 | 2026-07-17 | 58, 60, 61 | Desarrollador backend; Desarrollador frontend; DevOps / Cloud; Scrum Master | 22h |
| 63 | P4.59 | Demo interna del incremento completo | milestone | 1d | 2026-07-17 | 2026-07-17 | 62 | Gerente de proyecto; Product Owner; Scrum Master; Ingeniero QA | 10h |

Notes:
- 29: Arquitectura logica, componentes, integracion, ambientes, NFR y decisiones ADR.
- 30: DER, migraciones base, indices principales y datos semilla para desarrollo.
- 31: OpenAPI, contratos request/response, codigos de error y versionado.
- 32: Repositorio, estrategia de ramas, protecciones y reglas de pull request.
- 33: Linters, formatters, convenciones de commits, PR template y chequeos base.
- 34: Build automatizado, pruebas en CI, artefactos y reporte de fallas.
- 35: Ambientes configurados, variables, secretos protegidos y despliegue a staging.
- 36: Roles, permisos, politicas de sesion, requisitos OWASP y controles de auditoria.
- 37: Politica de backups, retencion, restauracion probada y continuidad operativa.
- 38: Datos semilla, catalogos iniciales, usuarios de prueba y validacion basica.
- 39: Checklist tecnico aprobado, riesgos abiertos y autorizacion para desarrollo principal.
- 40: Metricas, logs, alertas, dashboard tecnico y responsabilidades de seguimiento.
- 42: Shell de aplicacion, navegacion, layout responsive, estilos base y estados vacios.
- 43: Estructura de servicios, capas, configuracion, healthcheck y manejo de errores base.
- 44: Login, recuperacion, sesiones y pruebas unitarias de seguridad basica.
- 45: CRUD de usuarios, perfiles, estados, validaciones y mensajes de error.
- 46: Permisos aplicados en frontend/backend, casos negativos y evidencias de acceso.
- 47: Endpoints CRUD, validaciones, paginacion, filtros y errores de catalogo.
- 48: Pantallas de listado, alta, edicion, detalle, filtros y estados vacios.
- 49: Reglas compuestas, mensajes funcionales y cobertura de casos limite.
- 50: Proceso de negocio con estados, confirmaciones, auditoria y reglas principales.
- 51: Interfaz del flujo principal, formularios, confirmaciones y manejo de estados.
- 52: Registro de cambios, consulta de bitacora y trazabilidad por usuario.
- 53: Consultas agregadas, indicadores, filtros por periodo y endpoints de KPI.
- 54: Tarjetas de estado, graficas simples, filtros y vista operativa.
- 55: Generacion CSV/PDF, filtros, autorizacion y pruebas de datos.
- 56: Pantalla de reportes, descarga, vista imprimible y mensajes de error.
- 57: Busqueda por multiples criterios, ordenamiento, paginacion y persistencia de filtros.
- 58: Plantillas, disparadores, preferencias basicas y registro de envios.
- 59: Adaptador, manejo de errores, reintentos y pruebas con datos simulados.
- 60: Eventos criticos, logs estructurados, tablero de errores y trazabilidad tecnica.
- 61: Checklist WCAG basico, correcciones responsive y validacion visual.
- 62: Pull requests revisados, release candidate integrada y lista para pruebas formales.
- 63: Demo interna, observaciones levantadas y aprobacion para ciclo de pruebas.

| ID | WBS | Task | Type | Duration | Start | Finish | Predecessors | Resources | Work |
| --- | --- | --- | --- | --- | --- | --- | --- | --- | --- |
| 64 | P5 | **Pruebas, seguridad y estabilizacion** |  | 30d | 2026-07-17 | 2026-08-06 |  |  |  |
| 65 | P5.60 | Preparacion de plan de ejecucion QA |  | 1d | 2026-07-17 | 2026-07-17 | 63, 24 | Ingeniero QA; Analista de negocio; Scrum Master | 10h |
| 66 | P5.61 | Pruebas unitarias y de integracion |  | 3d | 2026-07-20 | 2026-07-22 | 65 | Ingeniero QA; Desarrollador frontend; Desarrollador backend | 52h |
| 67 | P5.62 | Pruebas de contratos API |  | 2d | 2026-07-20 | 2026-07-21 | 65, 31 | Ingeniero QA; Desarrollador backend | 22h |
| 68 | P5.63 | Pruebas funcionales end-to-end |  | 4d | 2026-07-22 | 2026-07-27 | 66, 56, 57 | Ingeniero QA; Desarrollador frontend; Desarrollador backend; Equipo de pruebas y perifericos | 51h |
| 69 | P5.64 | Pruebas de usabilidad y ajustes de experiencia |  | 2d | 2026-07-24 | 2026-07-27 | 61, 68 | Disenador UX/UI; Analista de negocio; Product Owner; Ingeniero QA | 24h |
| 70 | P5.65 | Pruebas de accesibilidad |  | 2d | 2026-07-27 | 2026-07-28 | 61, 68 | Ingeniero QA; Disenador UX/UI; Desarrollador frontend | 20h |
| 71 | P5.66 | Pruebas de rendimiento y optimizacion |  | 3d | 2026-07-28 | 2026-07-30 | 68 | DevOps / Cloud; Desarrollador backend; Desarrollador frontend | 34h |
| 72 | P5.67 | Revision de seguridad OWASP y hardening |  | 3d | 2026-07-28 | 2026-07-30 | 68, 36 | Especialista seguridad; Desarrollador backend; DevOps / Cloud | 40h |
| 73 | P5.68 | Pruebas de respaldo y restauracion |  | 1d | 2026-07-30 | 2026-07-30 | 37, 71 | DevOps / Cloud; Desarrollador backend; Servidor cloud staging/prod | 11h |
| 74 | P5.69 | Correccion de defectos criticos |  | 3d | 2026-07-31 | 2026-08-04 | 71, 72, 69 | Desarrollador frontend; Desarrollador backend; Ingeniero QA | 66h |
| 75 | P5.70 | Regresion completa y cierre QA |  | 2d | 2026-08-04 | 2026-08-05 | 74, 70, 73 | Ingeniero QA; Desarrollador frontend; Desarrollador backend | 38h |
| 76 | P5.71 | Revision de deuda tecnica y refactor menor |  | 2d | 2026-08-03 | 2026-08-04 | 74 | Desarrollador backend; Desarrollador frontend; DevOps / Cloud | 26h |
| 77 | P5.72 | UAT con usuarios clave y acta de aceptacion |  | 2d | 2026-08-05 | 2026-08-06 | 75 | Product Owner; Analista de negocio; Ingeniero QA; Gerente de proyecto | 42h |
| 78 | P6 | **Despliegue, cierre y transferencia** |  | 10d | 2026-08-06 | 2026-08-10 |  |  |  |
| 79 | P6.73 | Plan de despliegue y rollback |  | 2d | 2026-08-06 | 2026-08-07 | 75 | DevOps / Cloud; Gerente de proyecto; Desarrollador backend | 28h |
| 80 | P6.74 | Capacitacion y manual operativo |  | 2d | 2026-08-06 | 2026-08-07 | 75 | Analista de negocio; Product Owner; Disenador UX/UI; Licencias colaboracion y diseno | 31h |
| 81 | P6.75 | Preparacion de mesa de ayuda y soporte inicial |  | 1d | 2026-08-07 | 2026-08-07 | 80 | Scrum Master; Analista de negocio; Ingeniero QA; Gerente de proyecto | 14h |
| 82 | P6.76 | Migracion inicial y validacion de datos productivos |  | 1d | 2026-08-07 | 2026-08-07 | 79, 30 | Desarrollador backend; DevOps / Cloud; Analista de negocio | 20h |
| 83 | P6.77 | Despliegue a produccion y monitoreo inicial |  | 1d | 2026-08-10 | 2026-08-10 | 77, 79, 82 | DevOps / Cloud; Desarrollador backend; Desarrollador frontend; Servidor cloud staging/prod | 31h |
| 84 | P6.78 | Hiper-cuidado post lanzamiento |  | 1d | 2026-08-10 | 2026-08-10 | 83 | DevOps / Cloud; Desarrollador backend; Ingeniero QA; Product Owner | 20h |
| 85 | P6.79 | Entrega de documentacion tecnica y operativa |  | 1d | 2026-08-10 | 2026-08-10 | 80, 83 | Analista de negocio; Desarrollador backend; DevOps / Cloud; Gerente de proyecto | 16h |
| 86 | P6.80 | Cierre administrativo y lecciones aprendidas | milestone | 1d | 2026-08-10 | 2026-08-10 | 81, 84, 85 | Gerente de proyecto; Scrum Master; Product Owner | 16h |

Notes:
- 65: Plan de ejecucion, responsables, calendario, datos de prueba y evidencias requeridas.
- 66: Suite automatizada en CI para servicios, componentes criticos y contratos de API.
- 67: Contratos validados, codigos de error, versionado y evidencia de compatibilidad.
- 68: Ejecucion E2E de flujos principales con evidencias, defectos y severidad.
- 69: Sesiones cortas con usuarios, hallazgos priorizados y cambios de experiencia aprobados.
- 70: Validacion de teclado, contraste, etiquetas, foco y correcciones principales.
- 71: Medicion de carga, optimizacion de consultas, bundles y tiempos de respuesta.
- 72: Checklist OWASP, permisos, headers, secretos, dependencias y hallazgos cerrados.
- 73: Restauracion probada, evidencia de integridad y tiempos de recuperacion medidos.
- 74: Defectos criticos y mayores corregidos con evidencia de solucion.
- 75: Regresion completa, defectos cerrados, reporte de estabilidad y recomendacion de salida.
- 76: Refactors acotados, eliminacion de deuda prioritaria y verificacion de no regresion.
- 77: Pruebas de aceptacion, observaciones priorizadas y acta de aprobacion del MVP.
- 79: Runbook, ventanas, responsables, checklist, respaldo y estrategia de reversa.
- 80: Manual de usuario, sesion de capacitacion, preguntas frecuentes y guia de soporte inicial.
- 81: Canales de soporte, matriz de escalamiento, SLAs iniciales y responsables de atencion.
- 82: Carga inicial, validacion de consistencia, respaldo previo y evidencia de conciliacion.
- 83: Release productivo, smoke test, monitoreo, metricas y bitacora de lanzamiento.
- 84: Monitoreo reforzado, registro de incidencias tempranas y decisiones de estabilizacion.
- 85: Repositorio documental, manual tecnico, runbook final y evidencias de transferencia.
- 86: Cierre de proyecto, costos reales vs planeados, retrospectiva y backlog post-MVP.
