# Proyecto software TechStore - 80 tareas

Schedule from MS Project XML, 2026-05-11 to 2026-09-11.

## Calendars

- Standard: Mon-Fri 08:00-12:00, 13:00-17:00; Sat-Sun off.

## Resources

| Resource | Group | Rate | Cost per use | Notes |
| --- | --- | --- | --- | --- |
| No Asignado |  |  |  |  |
| Gerente de proyecto | Mano de obra | 850 |  | Project Manager. Control de alcance, cronograma, presupuesto, riesgos y comunicacion con direccion. |
| Product Owner | Mano de obra | 720 |  | Product Owner. Prioriza backlog, valida valor de negocio y acepta entregables. |
| Scrum Master | Mano de obra | 650 |  | Scrum Master. Facilita ceremonias, remueve bloqueos y cuida el flujo del equipo. |
| Analista de negocio | Mano de obra | 620 |  | Business Analyst. Levantamiento, reglas de negocio, historias de usuario y criterios de aceptacion. |
| Disenador UX/UI | Mano de obra | 580 |  | UX/UI Designer. Arquitectura de informacion, prototipos, sistema visual y pruebas de usabilidad. |
| Desarrollador frontend | Mano de obra | 650 |  | Frontend Engineer. Interfaz web, accesibilidad, responsive, integracion con API y estados de UI. |
| Desarrollador backend | Mano de obra | 700 |  | Backend Engineer. API, base de datos, autenticacion, logica de negocio e integraciones. |
| Ingeniero QA | Mano de obra | 480 |  | QA Engineer. Plan de pruebas, ejecucion funcional, regresion, evidencias y defectos. |
| DevOps / Cloud | Mano de obra | 760 |  | DevOps Engineer. CI/CD, ambientes, monitoreo, backups y despliegue. |
| Especialista seguridad | Mano de obra | 820 |  | Security Engineer. Modelo de amenazas, revision OWASP, hardening y validacion de controles. |
| Servidor cloud staging/prod | Arrendamiento |  | 42 | Infraestructura cloud. Arrendamiento por 3 meses: VPS administrado, base de datos, backups y monitoreo. |
| Licencias colaboracion y diseno | Arrendamiento |  | 37.5 | SaaS de equipo. Figma, Jira/Confluence, repositorio privado y almacenamiento de evidencias por 3 meses. |
| Equipo de pruebas y perifericos | Material |  | 260 | Material QA. Dispositivos de prueba, cables, adaptadores, disco externo y perifericos. |

## Schedule

| ID | WBS | Task | Type | Duration | Start | Finish | Predecessors | Resources |
| --- | --- | --- | --- | --- | --- | --- | --- | --- |
| 1 | P1 | **Inicio y descubrimiento** |  | 15.12d | 2026-05-11 | 2026-06-01 |  |  |
| 2 | P1.1 | Acta de constitucion y alcance inicial |  | 1.88d | 2026-05-11 | 2026-05-13 |  | Gerente de proyecto; Product Owner |
| 3 | P1.2 | Identificacion de interesados y matriz RACI |  | 1.88d | 2026-05-13 | 2026-05-15 | 2 | Gerente de proyecto; Analista de negocio |
| 4 | P1.3 | Plan de comunicacion y gobierno del proyecto |  | 1.88d | 2026-05-13 | 2026-05-15 | 2 | Gerente de proyecto; Scrum Master |
| 5 | P1.4 | Analisis de contexto del negocio TechStore |  | 1.88d | 2026-05-15 | 2026-05-19 | 3, 4 | Analista de negocio; Product Owner |
| 6 | P1.5 | Levantamiento de necesidades con usuarios clave |  | 4.88d | 2026-05-15 | 2026-05-22 | 3, 4 | Analista de negocio; Product Owner; Disenador UX/UI |
| 7 | P1.6 | Inventario de procesos actuales y sistemas relacionados |  | 2.88d | 2026-05-19 | 2026-05-22 | 5 | Analista de negocio; Desarrollador backend; DevOps / Cloud |
| 8 | P1.7 | Analisis inicial de riesgos del proyecto |  | 1.88d | 2026-05-19 | 2026-05-21 | 5 | Gerente de proyecto; Scrum Master; Especialista seguridad |
| 9 | P1.8 | Definicion de alcance MVP y fuera de alcance |  | 1.88d | 2026-05-22 | 2026-05-26 | 6, 7 | Gerente de proyecto; Product Owner; Analista de negocio |
| 10 | P1.9 | Backlog inicial priorizado |  | 2.88d | 2026-05-22 | 2026-05-27 | 6 | Product Owner; Analista de negocio; Gerente de proyecto |
| 11 | P1.10 | Estimacion inicial de esfuerzo y presupuesto |  | 1.88d | 2026-05-27 | 2026-05-28 | 9, 10 | Gerente de proyecto; Scrum Master; Desarrollador backend; Desarrollador frontend |
| 12 | P1.11 | Plan de gestion de calidad |  | 0.88d | 2026-05-29 | 2026-05-29 | 11 | Gerente de proyecto; Ingeniero QA; Scrum Master |
| 13 | P1.12 | Kickoff formal con equipo y sponsor | milestone | 0.88d | 2026-05-29 | 2026-06-01 | 12 | Gerente de proyecto; Product Owner; Scrum Master |
| 14 | P2 | **Analisis y diseno funcional** |  | 15.25d | 2026-06-01 | 2026-06-22 |  |  |
| 15 | P2.13 | Historias de usuario y criterios de aceptacion |  | 4.88d | 2026-06-01 | 2026-06-08 | 13 | Analista de negocio; Product Owner; Ingeniero QA |
| 16 | P2.14 | Modelo de dominio y reglas de negocio |  | 3.88d | 2026-06-08 | 2026-06-12 | 15 | Analista de negocio; Desarrollador backend; Product Owner |
| 17 | P2.15 | Taller de requisitos no funcionales |  | 1.88d | 2026-06-08 | 2026-06-10 | 15 | Analista de negocio; Desarrollador backend; DevOps / Cloud; Especialista seguridad |
| 18 | P2.16 | Mapa de navegacion y arquitectura de informacion |  | 2.88d | 2026-06-01 | 2026-06-04 | 13 | Disenador UX/UI; Analista de negocio |
| 19 | P2.17 | Wireframes de flujo de autenticacion y usuarios |  | 2.88d | 2026-06-04 | 2026-06-09 | 18 | Disenador UX/UI; Desarrollador frontend; Product Owner |
| 20 | P2.18 | Wireframes de catalogo y administracion |  | 2.88d | 2026-06-04 | 2026-06-09 | 18 | Disenador UX/UI; Analista de negocio; Desarrollador frontend |
| 21 | P2.19 | Wireframes de flujo transaccional principal |  | 2.88d | 2026-06-04 | 2026-06-09 | 18 | Disenador UX/UI; Product Owner; Analista de negocio |
| 22 | P2.20 | Prototipo visual navegable |  | 4.88d | 2026-06-09 | 2026-06-16 | 19, 20, 21 | Disenador UX/UI; Desarrollador frontend; Product Owner |
| 23 | P2.21 | Mini sistema de diseno y componentes base |  | 3.88d | 2026-06-16 | 2026-06-22 | 22 | Disenador UX/UI; Desarrollador frontend |
| 24 | P2.22 | Plan de pruebas funcionales y trazabilidad |  | 2.88d | 2026-06-08 | 2026-06-11 | 15 | Ingeniero QA; Analista de negocio |
| 25 | P2.23 | Validacion de prototipo con usuarios clave |  | 1.88d | 2026-06-16 | 2026-06-18 | 22 | Disenador UX/UI; Product Owner; Analista de negocio |
| 26 | P2.24 | Refinamiento de backlog para desarrollo |  | 1.88d | 2026-06-18 | 2026-06-22 | 16, 24, 25 | Product Owner; Analista de negocio; Scrum Master |
| 27 | P2.25 | Aprobacion funcional de analisis y diseno | milestone | 0.88d | 2026-06-22 | 2026-06-22 | 26 | Gerente de proyecto; Product Owner; Analista de negocio |

Notes:
- 2: Project charter firmado con objetivos SMART, restricciones, supuestos y patrocinador definido.
- 3: Mapa de stakeholders, canales, responsables, aprobadores y nivel de influencia.
- 4: Cadencia de reuniones, minutas, tablero de decisiones y reglas de escalamiento.
- 5: Situacion actual, objetivos de venta, necesidades operativas y restricciones del negocio.
- 6: Entrevistas, pain points, oportunidades, restricciones operativas y flujo actual documentado.
- 7: Mapa de procesos, sistemas conectados, entradas, salidas y responsables actuales.
- 8: Registro inicial de riesgos, probabilidad, impacto, respuesta y propietario.
- 9: Alcance aprobado, exclusiones, restricciones y criterios de exito medibles.
- 10: Epicas, historias candidatas, criterios de prioridad y primera version del MVP.
- 11: Estimacion por frente, supuestos, costos principales y reservas de gestion.
- 12: Criterios de calidad, revisiones, evidencia requerida y politicas de aceptacion.
- 13: Presentacion de alcance, calendario, riesgos iniciales y acuerdos de trabajo.
- 15: Historias INVEST con criterios Given/When/Then y reglas de negocio verificables.
- 16: Entidades, relaciones, estados, validaciones y glosario funcional.
- 17: Requisitos de disponibilidad, rendimiento, seguridad, mantenibilidad y soporte priorizados.
- 18: Sitemap, flujos principales y jerarquia de pantallas para MVP.
- 19: Wireframes de login, recuperacion, perfil, roles y estados de error.
- 20: Wireframes de altas, edicion, busqueda, filtros, listados y detalle.
- 21: Wireframes del proceso principal con confirmaciones, estados y mensajes.
- 22: Prototipo mobile/desktop navegable con componentes y estados principales.
- 23: Tokens visuales, botones, formularios, tablas, alertas y componentes reutilizables.
- 24: Matriz historia-prueba, escenarios positivos/negativos y estrategia de regresion.
- 25: Hallazgos de usabilidad, ajustes priorizados y aprobacion del flujo visual principal.
- 26: Backlog listo para sprint, dependencias, criterios de listo y prioridades finales.
- 27: Acta de aprobacion funcional, diseno validado y autorizacion para construir.

| ID | WBS | Task | Type | Duration | Start | Finish | Predecessors | Resources |
| --- | --- | --- | --- | --- | --- | --- | --- | --- |
| 28 | P3 | **Arquitectura y preparacion tecnica** |  | 17.12d | 2026-06-12 | 2026-07-07 |  |  |
| 29 | P3.26 | Diseno de arquitectura tecnica |  | 3.88d | 2026-06-12 | 2026-06-18 | 16, 17 | Desarrollador backend; DevOps / Cloud; Especialista seguridad |
| 30 | P3.27 | Modelo de datos y migraciones iniciales |  | 3.88d | 2026-06-18 | 2026-06-24 | 29 | Desarrollador backend; Analista de negocio |
| 31 | P3.28 | Estrategia de API y contratos de integracion |  | 2.88d | 2026-06-18 | 2026-06-23 | 29 | Desarrollador backend; Desarrollador frontend; Ingeniero QA |
| 32 | P3.29 | Configuracion de repositorio y estrategia de ramas |  | 1.88d | 2026-06-18 | 2026-06-22 | 29 | DevOps / Cloud; Desarrollador frontend; Desarrollador backend |
| 33 | P3.30 | Configuracion de linters y calidad automatizada |  | 1.88d | 2026-06-22 | 2026-06-24 | 32 | DevOps / Cloud; Desarrollador frontend; Desarrollador backend |
| 34 | P3.31 | Pipeline CI para build y pruebas |  | 2.88d | 2026-06-24 | 2026-06-26 | 33 | DevOps / Cloud; Desarrollador backend; Desarrollador frontend |
| 35 | P3.32 | Ambientes dev y staging |  | 2.88d | 2026-06-29 | 2026-07-01 | 34 | DevOps / Cloud; Desarrollador backend; Servidor cloud staging/prod |
| 36 | P3.33 | Arquitectura de seguridad y permisos |  | 2.88d | 2026-06-18 | 2026-06-23 | 29 | Especialista seguridad; Desarrollador backend; Product Owner |
| 37 | P3.34 | Plan de respaldo y recuperacion tecnica |  | 1.88d | 2026-07-01 | 2026-07-03 | 35 | DevOps / Cloud; Desarrollador backend; Servidor cloud staging/prod |
| 38 | P3.35 | Preparacion de datos semilla y catalogos base |  | 1.88d | 2026-06-24 | 2026-06-26 | 30 | Desarrollador backend; Analista de negocio; Ingeniero QA |
| 39 | P3.36 | Revision tecnica de arquitectura y readiness | milestone | 0.88d | 2026-06-29 | 2026-06-29 | 30, 31, 34, 36, 38 | Gerente de proyecto; Desarrollador backend; DevOps / Cloud; Especialista seguridad |
| 40 | P3.37 | Plan de monitoreo y observabilidad |  | 1.88d | 2026-07-03 | 2026-07-07 | 35, 37 | DevOps / Cloud; Desarrollador backend; Especialista seguridad |
| 41 | P4 | **Construccion del producto** |  | 38.5d | 2026-06-22 | 2026-08-13 |  |  |
| 42 | P4.38 | Base del frontend y layout responsive |  | 4.88d | 2026-06-22 | 2026-06-29 | 23, 32 | Desarrollador frontend; Disenador UX/UI |
| 43 | P4.39 | Base del backend y estructura de servicios |  | 3.88d | 2026-06-29 | 2026-07-03 | 30, 39 | Desarrollador backend; DevOps / Cloud |
| 44 | P4.40 | API de autenticacion |  | 3.88d | 2026-07-03 | 2026-07-09 | 36, 43 | Desarrollador backend; Especialista seguridad; Ingeniero QA |
| 45 | P4.41 | Gestion de usuarios y perfiles |  | 3.88d | 2026-07-09 | 2026-07-15 | 44 | Desarrollador backend; Desarrollador frontend; Ingeniero QA |
| 46 | P4.42 | Gestion de roles y permisos en UI/API |  | 3.88d | 2026-07-15 | 2026-07-21 | 45, 36 | Desarrollador backend; Desarrollador frontend; Especialista seguridad; Ingeniero QA |
| 47 | P4.43 | Modulo de catalogo - backend |  | 4.88d | 2026-07-03 | 2026-07-10 | 30, 43 | Desarrollador backend; Ingeniero QA |
| 48 | P4.44 | Modulo de catalogo - frontend |  | 4.88d | 2026-07-10 | 2026-07-17 | 42, 47 | Desarrollador frontend; Disenador UX/UI; Ingeniero QA |
| 49 | P4.45 | Validaciones avanzadas de negocio |  | 2.88d | 2026-07-17 | 2026-07-22 | 47, 48 | Desarrollador backend; Analista de negocio; Ingeniero QA |
| 50 | P4.46 | Flujo transaccional - backend |  | 4.88d | 2026-07-22 | 2026-07-29 | 46, 49 | Desarrollador backend; Analista de negocio; Ingeniero QA |
| 51 | P4.47 | Flujo transaccional - frontend |  | 4.88d | 2026-07-29 | 2026-08-05 | 46, 48, 50 | Desarrollador frontend; Disenador UX/UI; Ingeniero QA |
| 52 | P4.48 | Bitacora y auditoria funcional |  | 2.88d | 2026-07-29 | 2026-08-03 | 50 | Desarrollador backend; Especialista seguridad; Ingeniero QA |
| 53 | P4.49 | Dashboard operativo y KPIs - backend |  | 2.88d | 2026-07-29 | 2026-08-03 | 47, 50 | Desarrollador backend; Product Owner |
| 54 | P4.50 | Dashboard operativo y KPIs - frontend |  | 3.88d | 2026-08-03 | 2026-08-06 | 53, 42 | Desarrollador frontend; Disenador UX/UI; Product Owner |
| 55 | P4.51 | Reportes exportables - backend |  | 2.88d | 2026-08-03 | 2026-08-05 | 53 | Desarrollador backend; Ingeniero QA |
| 56 | P4.52 | Reportes exportables - frontend |  | 2.88d | 2026-08-07 | 2026-08-11 | 55, 54 | Desarrollador frontend; Ingeniero QA |
| 57 | P4.53 | Busqueda avanzada y filtros combinados |  | 2.88d | 2026-08-06 | 2026-08-10 | 48, 55 | Desarrollador frontend; Desarrollador backend; Ingeniero QA |
| 58 | P4.54 | Notificaciones y correos transaccionales |  | 3.88d | 2026-08-05 | 2026-08-10 | 51, 52 | Desarrollador backend; Desarrollador frontend; DevOps / Cloud |
| 59 | P4.55 | Integracion con servicio externo simulado |  | 2.88d | 2026-07-29 | 2026-08-03 | 50, 31 | Desarrollador backend; DevOps / Cloud; Ingeniero QA |
| 60 | P4.56 | Integracion de analitica y logs estructurados |  | 3.88d | 2026-08-05 | 2026-08-10 | 51, 40 | DevOps / Cloud; Desarrollador backend; Especialista seguridad |
| 61 | P4.57 | Ajustes de accesibilidad y responsive final |  | 2.88d | 2026-08-05 | 2026-08-07 | 42, 51, 25 | Desarrollador frontend; Disenador UX/UI; Ingeniero QA |
| 62 | P4.58 | Revision de codigo y merge de release candidate |  | 1.88d | 2026-08-11 | 2026-08-12 | 58, 60, 61 | Desarrollador backend; Desarrollador frontend; DevOps / Cloud; Scrum Master |
| 63 | P4.59 | Demo interna del incremento completo | milestone | 0.88d | 2026-08-12 | 2026-08-13 | 62 | Gerente de proyecto; Product Owner; Scrum Master; Ingeniero QA |

Notes:
- 29: Arquitectura logica, componentes, integracion, ambientes, NFR y decisiones ADR.
- 30: DER, migraciones base, indices principales y datos semilla para desarrollo.
- 31: OpenAPI, contratos request/response, codigos de error y versionado.
- 32: Repositorio, estrategia de ramas, protecciones y reglas de pull request.
- 33: Linters, formatters, convenciones de commits, PR template y chequeos base.
- 34: Build automatizado, pruebas en CI, artefactos y reporte de fallas.
- 35: Ambientes configurados, variables, secretos protegidos y despliegue a staging.
- 36: Roles, permisos, politicas de sesion, requisitos OWASP y controles de auditoria.
- 37: Politica de backups, retencion, restauracion probada y continuidad operativa.
- 38: Datos semilla, catalogos iniciales, usuarios de prueba y validacion basica.
- 39: Checklist tecnico aprobado, riesgos abiertos y autorizacion para desarrollo principal.
- 40: Metricas, logs, alertas, dashboard tecnico y responsabilidades de seguimiento.
- 42: Shell de aplicacion, navegacion, layout responsive, estilos base y estados vacios.
- 43: Estructura de servicios, capas, configuracion, healthcheck y manejo de errores base.
- 44: Login, recuperacion, sesiones y pruebas unitarias de seguridad basica.
- 45: CRUD de usuarios, perfiles, estados, validaciones y mensajes de error.
- 46: Permisos aplicados en frontend/backend, casos negativos y evidencias de acceso.
- 47: Endpoints CRUD, validaciones, paginacion, filtros y errores de catalogo.
- 48: Pantallas de listado, alta, edicion, detalle, filtros y estados vacios.
- 49: Reglas compuestas, mensajes funcionales y cobertura de casos limite.
- 50: Proceso de negocio con estados, confirmaciones, auditoria y reglas principales.
- 51: Interfaz del flujo principal, formularios, confirmaciones y manejo de estados.
- 52: Registro de cambios, consulta de bitacora y trazabilidad por usuario.
- 53: Consultas agregadas, indicadores, filtros por periodo y endpoints de KPI.
- 54: Tarjetas de estado, graficas simples, filtros y vista operativa.
- 55: Generacion CSV/PDF, filtros, autorizacion y pruebas de datos.
- 56: Pantalla de reportes, descarga, vista imprimible y mensajes de error.
- 57: Busqueda por multiples criterios, ordenamiento, paginacion y persistencia de filtros.
- 58: Plantillas, disparadores, preferencias basicas y registro de envios.
- 59: Adaptador, manejo de errores, reintentos y pruebas con datos simulados.
- 60: Eventos criticos, logs estructurados, tablero de errores y trazabilidad tecnica.
- 61: Checklist WCAG basico, correcciones responsive y validacion visual.
- 62: Pull requests revisados, release candidate integrada y lista para pruebas formales.
- 63: Demo interna, observaciones levantadas y aprobacion para ciclo de pruebas.

| ID | WBS | Task | Type | Duration | Start | Finish | Predecessors | Resources |
| --- | --- | --- | --- | --- | --- | --- | --- | --- |
| 64 | P5 | **Pruebas, seguridad y estabilizacion** |  | 17.12d | 2026-08-13 | 2026-09-07 |  |  |
| 65 | P5.60 | Preparacion de plan de ejecucion QA |  | 0.88d | 2026-08-13 | 2026-08-14 | 63, 24 | Ingeniero QA; Analista de negocio; Scrum Master |
| 66 | P5.61 | Pruebas unitarias y de integracion |  | 2.88d | 2026-08-14 | 2026-08-19 | 65 | Ingeniero QA; Desarrollador frontend; Desarrollador backend |
| 67 | P5.62 | Pruebas de contratos API |  | 1.88d | 2026-08-14 | 2026-08-18 | 65, 31 | Ingeniero QA; Desarrollador backend |
| 68 | P5.63 | Pruebas funcionales end-to-end |  | 3.88d | 2026-08-19 | 2026-08-25 | 66, 56, 57 | Ingeniero QA; Desarrollador frontend; Desarrollador backend; Equipo de pruebas y perifericos |
| 69 | P5.64 | Pruebas de usabilidad y ajustes de experiencia |  | 1.88d | 2026-08-25 | 2026-08-27 | 61, 68 | Disenador UX/UI; Analista de negocio; Product Owner; Ingeniero QA |
| 70 | P5.65 | Pruebas de accesibilidad |  | 1.88d | 2026-08-25 | 2026-08-27 | 61, 68 | Ingeniero QA; Disenador UX/UI; Desarrollador frontend |
| 71 | P5.66 | Pruebas de rendimiento y optimizacion |  | 2.88d | 2026-08-25 | 2026-08-28 | 68 | DevOps / Cloud; Desarrollador backend; Desarrollador frontend |
| 72 | P5.67 | Revision de seguridad OWASP y hardening |  | 2.88d | 2026-08-25 | 2026-08-28 | 68, 36 | Especialista seguridad; Desarrollador backend; DevOps / Cloud |
| 73 | P5.68 | Pruebas de respaldo y restauracion |  | 0.88d | 2026-08-28 | 2026-08-31 | 37, 71 | DevOps / Cloud; Desarrollador backend; Servidor cloud staging/prod |
| 74 | P5.69 | Correccion de defectos criticos |  | 2.88d | 2026-08-28 | 2026-09-02 | 71, 72, 69 | Desarrollador frontend; Desarrollador backend; Ingeniero QA |
| 75 | P5.70 | Regresion completa y cierre QA |  | 1.88d | 2026-09-02 | 2026-09-03 | 74, 70, 73 | Ingeniero QA; Desarrollador frontend; Desarrollador backend |
| 76 | P5.71 | Revision de deuda tecnica y refactor menor |  | 1.88d | 2026-09-02 | 2026-09-03 | 74 | Desarrollador backend; Desarrollador frontend; DevOps / Cloud |
| 77 | P5.72 | UAT con usuarios clave y acta de aceptacion |  | 1.88d | 2026-09-04 | 2026-09-07 | 75 | Product Owner; Analista de negocio; Ingeniero QA; Gerente de proyecto |
| 78 | P6 | **Despliegue, cierre y transferencia** |  | 5.38d | 2026-09-04 | 2026-09-11 |  |  |
| 79 | P6.73 | Plan de despliegue y rollback |  | 1.88d | 2026-09-04 | 2026-09-07 | 75 | DevOps / Cloud; Gerente de proyecto; Desarrollador backend |
| 80 | P6.74 | Capacitacion y manual operativo |  | 1.88d | 2026-09-04 | 2026-09-07 | 75 | Analista de negocio; Product Owner; Disenador UX/UI; Licencias colaboracion y diseno |
| 81 | P6.75 | Preparacion de mesa de ayuda y soporte inicial |  | 0.88d | 2026-09-07 | 2026-09-08 | 80 | Scrum Master; Analista de negocio; Ingeniero QA; Gerente de proyecto |
| 82 | P6.76 | Migracion inicial y validacion de datos productivos |  | 0.88d | 2026-09-07 | 2026-09-08 | 79, 30 | Desarrollador backend; DevOps / Cloud; Analista de negocio |
| 83 | P6.77 | Despliegue a produccion y monitoreo inicial |  | 0.88d | 2026-09-08 | 2026-09-09 | 77, 79, 82 | DevOps / Cloud; Desarrollador backend; Desarrollador frontend; Servidor cloud staging/prod |
| 84 | P6.78 | Hiper-cuidado post lanzamiento |  | 0.88d | 2026-09-09 | 2026-09-10 | 83 | DevOps / Cloud; Desarrollador backend; Ingeniero QA; Product Owner |
| 85 | P6.79 | Entrega de documentacion tecnica y operativa |  | 0.88d | 2026-09-09 | 2026-09-10 | 80, 83 | Analista de negocio; Desarrollador backend; DevOps / Cloud; Gerente de proyecto |
| 86 | P6.80 | Cierre administrativo y lecciones aprendidas | milestone | 0.88d | 2026-09-10 | 2026-09-11 | 81, 84, 85 | Gerente de proyecto; Scrum Master; Product Owner |

Notes:
- 65: Plan de ejecucion, responsables, calendario, datos de prueba y evidencias requeridas.
- 66: Suite automatizada en CI para servicios, componentes criticos y contratos de API.
- 67: Contratos validados, codigos de error, versionado y evidencia de compatibilidad.
- 68: Ejecucion E2E de flujos principales con evidencias, defectos y severidad.
- 69: Sesiones cortas con usuarios, hallazgos priorizados y cambios de experiencia aprobados.
- 70: Validacion de teclado, contraste, etiquetas, foco y correcciones principales.
- 71: Medicion de carga, optimizacion de consultas, bundles y tiempos de respuesta.
- 72: Checklist OWASP, permisos, headers, secretos, dependencias y hallazgos cerrados.
- 73: Restauracion probada, evidencia de integridad y tiempos de recuperacion medidos.
- 74: Defectos criticos y mayores corregidos con evidencia de solucion.
- 75: Regresion completa, defectos cerrados, reporte de estabilidad y recomendacion de salida.
- 76: Refactors acotados, eliminacion de deuda prioritaria y verificacion de no regresion.
- 77: Pruebas de aceptacion, observaciones priorizadas y acta de aprobacion del MVP.
- 79: Runbook, ventanas, responsables, checklist, respaldo y estrategia de reversa.
- 80: Manual de usuario, sesion de capacitacion, preguntas frecuentes y guia de soporte inicial.
- 81: Canales de soporte, matriz de escalamiento, SLAs iniciales y responsables de atencion.
- 82: Carga inicial, validacion de consistencia, respaldo previo y evidencia de conciliacion.
- 83: Release productivo, smoke test, monitoreo, metricas y bitacora de lanzamiento.
- 84: Monitoreo reforzado, registro de incidencias tempranas y decisiones de estabilizacion.
- 85: Repositorio documental, manual tecnico, runbook final y evidencias de transferencia.
- 86: Cierre de proyecto, costos reales vs planeados, retrospectiva y backlog post-MVP.
